How a schedule from OmniPlan changed from version to version. A marks actual dates.

## Version 1 (saved 2015-09-16)

Note of the change: structure change

| ID | WBS | Task | Start | Predecessors | Complete | Constraint |
| --- | --- | --- | --- | --- | --- | --- |
| 1 | 1 | **tech gap** |  |  |  |  |
| 2 |  | springmvc | 2015-09-10 |  | 100% | start no earlier than 2015-09-07 |
| 3 |  | json＋springmvc | 2015-09-16 | 2 |  | start no earlier than 2015-09-11 |
| 4 |  | restful service | 2015-09-17 | 3 |  | start no earlier than 2015-09-14 |
| 5 |  | maven springmvc | 2015-09-07 |  | 100% | start no earlier than 2015-09-04 |
| 6 |  | sonatype nexus | 2015-09-11 |  | 100% | start no earlier than 2015-09-08 |
| 7 |  | spring mvc, mybatis, json，restful，maven，nexus demo | 2015-09-16 | 2 | 80% | start no earlier than 2015-09-15 |
| 8 |  | oa bootstrap | 2015-09-22 | 4 |  | start no earlier than 2015-09-17 |
| 9 |  | Grails |  |  |  | start no earlier than 2015-09-24 |
| 10 | 2 | **demo version** |  |  |  | start no earlier than 2015-09-17 |
| 11 |  | springmvc+mybatis demo CRUD |  |  |  | start no earlier than 2015-09-17 |
| 12 |  | bootstrap UI HTML |  |  |  | start no earlier than 2015-09-17 |
| 13 |  | 数据库ER图 |  |  |  | start no earlier than 2015-09-17 |
| 14 |  | 数据库字段设计 |  |  |  | start no earlier than 2015-09-17 |

## Version 2 (saved 2015-09-17)

Note of the change: workplace change

Added:

| ID | Task | Constraint | Resources |
| --- | --- | --- | --- |
| 15 | aop rule设计实现 | start no earlier than 2015-09-23 | Xu Chen Fei |
| 16 | >里程碑 1 | start no earlier than 2015-09-25 |  |
| 17 | **任务Task管理** | start no earlier than 2015-09-29 |  |
| 18 | Task数据库设计review | start no earlier than 2015-09-17 |  |
| 19 | Task画面设计review | start no earlier than 2015-09-17 |  |
| 20 | TaskHTML实现 | start no earlier than 2015-09-17 |  |
| 21 | TaskCRUD实现 | start no earlier than 2015-09-17 |  |
| 22 | **notes管理** | start no earlier than 2015-10-01 |  |
| 23 | notes数据库设计review | start no earlier than 2015-09-17 |  |
| 24 | notes画面设计review | start no earlier than 2015-09-17 |  |
| 25 | notesHTML实现 | start no earlier than 2015-09-17 |  |
| 26 | notesCRUD实现 | start no earlier than 2015-09-17 |  |
| 27 | **holiday管理** | start no earlier than 2015-10-05 |  |
| 28 | holiday数据库设计review | start no earlier than 2015-10-05 |  |
| 29 | holiday画面设计review | start no earlier than 2015-10-05 |  |
| 30 | holiday HTML实现 | start no earlier than 2015-10-05 |  |
| 31 | holiday CRUD实现 | start no earlier than 2015-10-05 |  |
| 32 | >里程碑 2 | start no earlier than 2015-10-07 |  |
| 33 | **文档管理** | start no earlier than 2015-10-07 |  |
| 34 | 文档数据库设计review | start no earlier than 2015-09-17 |  |
| 35 | 文档画面设计review | start no earlier than 2015-09-17 |  |
| 36 | 文档HTML实现 | start no earlier than 2015-09-17 |  |
| 37 | 文档CRUD实现 | start no earlier than 2015-09-17 |  |
| 38 | **统一类型管理界面** | start no earlier than 2015-10-12 |  |
| 39 | 文档类型 | start no earlier than 2015-10-12 | Dai Wen Bo |
| 40 | 任务类型 | start no earlier than 2015-10-12 | Dai Wen Bo |
| 41 | notes类型 | start no earlier than 2015-10-13 | Dai Wen Bo |
| 42 | 活动类型 | start no earlier than 2015-10-14 | Dai Wen Bo |
| 43 | 用户类型 | start no earlier than 2015-10-14 | Dai Wen Bo |
| 44 | >里程碑 3 | start no earlier than 2015-10-15 |  |
| 45 | **任务活动管理** | start no earlier than 2015-10-16 |  |
| 46 | 活动模版管理 | start no earlier than 2015-10-16 | Dai Wen Bo |
| 47 | 活动触发 | start no earlier than 2015-10-16 | Xu Chen Fei |
| 48 | 活动关闭 | start no earlier than 2015-10-19 | Xu Chen Fei |
| 49 | 活动依赖 | start no earlier than 2015-10-19 | Xu Chen Fei |
| 50 | >里程碑 4 第一版 | start no earlier than 2015-10-21 |  |
| 51 | 工作日历功能 | start no earlier than 2015-10-26 |  |
| 52 | 系统管理 | start no earlier than 2015-10-26 |  |
| 53 | **管理计划** | start no earlier than 2015-09-17 |  |
| 54 | 企业文化及宗旨 | start no earlier than 2015-09-17 |  |
| 55 | 同类软件功能调查 | start no earlier than 2015-09-21 |  |
| 56 | 同类软件功能报价 | start no earlier than 2015-09-21 |  |
| 57 | 工作职责划分 | start no earlier than 2015-09-21 |  |
| 58 | 利润分配讨论并划分 | start no earlier than 2015-09-22 |  |
| 59 | 产品盈利模式 | start no earlier than 2015-09-23 |  |
| 60 | 风险管理 | start no earlier than 2015-09-29 |  |
| 61 | 沟通管理方式 | start no earlier than 2015-10-01 |  |
| 62 | 冲突管理方式 | start no earlier than 2015-10-05 |  |

Changed:

| ID | Task | Start | Complete | Other |
| --- | --- | --- | --- | --- |
| 2 | springmvc | 2015-09-10 → none |  | constraint start no earlier than 2015-09-07 → start no earlier than 2015-09-10; resources none → Xu Chen Fei |
| 3 | json＋springmvc | 2015-09-16 → none |  | constraint start no earlier than 2015-09-11 → start no earlier than 2015-09-17; resources none → Xu Chen Fei |
| 4 | restful service | 2015-09-17 → none |  | constraint start no earlier than 2015-09-14 → start no earlier than 2015-09-18; resources none → Xu Chen Fei |
| 5 | maven springmvc | 2015-09-07 → none |  | constraint start no earlier than 2015-09-04 → start no earlier than 2015-09-07; resources none → Xu Chen Fei |
| 6 | sonatype nexus | 2015-09-11 → none |  | constraint start no earlier than 2015-09-08 → start no earlier than 2015-09-14; resources none → Xu Chen Fei |
| 7 | spring mvc, mybatis, json，restful，maven，nexus demo | 2015-09-16 → none |  | constraint start no earlier than 2015-09-15 → start no earlier than 2015-09-17; resources none → Xu Chen Fei |
| 8 | oa bootstrap | 2015-09-22 → none |  | constraint start no earlier than 2015-09-17 → start no earlier than 2015-09-23; resources none → Xu Chen Fei |
| 9 | Grails |  |  | resources none → Xu Chen Fei |
| 10 | **demo version用户管理** |  |  | was named demo version |
| 11 | springmvc+mybatis demo CRUD |  | 0% → 75% | resources none → Xu Chen Fei |
| 12 | bootstrap UI HTML |  |  | resources none → Xu Chen Fei |
| 13 | 数据库ER图 |  | 0% → 50% | resources none → Xu Chen Fei |
| 14 | 数据库字段设计 |  | 0% → 40% | resources none → Xu Chen Fei |

## Version 3 (saved 2015-09-17)

Note of the change: db design change location to design

Added:

| ID | Task | Constraint |
| --- | --- | --- |
| 52 | 工作日历数据库设计review | start no earlier than 2015-10-28 |
| 53 | 工作日历画面设计review | start no earlier than 2015-10-28 |
| 54 | 工作日历HTML实现 | start no earlier than 2015-10-28 |
| 55 | 工作日历CRUD实现 | start no earlier than 2015-10-28 |
| 57 | 系统管理数据库设计review | start no earlier than 2015-10-30 |
| 58 | 系统管理画面设计review | start no earlier than 2015-10-30 |
| 59 | 系统管理HTML实现 | start no earlier than 2015-10-30 |
| 60 | 系统管理CRUD实现 | start no earlier than 2015-10-30 |

Changed:

| ID | Task | Other |
| --- | --- | --- |
| 25 | notesHTML实现 | constraint start no earlier than 2015-09-17 → start no earlier than 2015-10-02 |
| 26 | notesCRUD实现 | constraint start no earlier than 2015-09-17 → start no earlier than 2015-10-05 |
| 27 | **holiday管理** | constraint start no earlier than 2015-10-05 → start no earlier than 2015-10-07 |
| 28 | holiday数据库设计review | constraint start no earlier than 2015-10-05 → start no earlier than 2015-10-07 |
| 29 | holiday画面设计review | constraint start no earlier than 2015-10-05 → start no earlier than 2015-10-07 |
| 30 | holiday HTML实现 | constraint start no earlier than 2015-10-05 → start no earlier than 2015-10-08 |
| 31 | holiday CRUD实现 | constraint start no earlier than 2015-10-05 → start no earlier than 2015-10-09 |
| 32 | >里程碑 2 | constraint start no earlier than 2015-10-07 → start no earlier than 2015-10-09 |
| 33 | **文档管理** | constraint start no earlier than 2015-10-07 → start no earlier than 2015-10-13 |
| 36 | 文档HTML实现 | constraint start no earlier than 2015-09-17 → start no earlier than 2015-10-14 |
| 37 | 文档CRUD实现 | constraint start no earlier than 2015-09-17 → start no earlier than 2015-10-15 |
| 38 | **统一类型管理界面** | constraint start no earlier than 2015-10-12 → start no earlier than 2015-10-20 |
| 39 | 文档类型 | constraint start no earlier than 2015-10-12 → start no earlier than 2015-10-20 |
| 40 | 任务类型 | constraint start no earlier than 2015-10-12 → start no earlier than 2015-10-20 |
| 41 | notes类型 | constraint start no earlier than 2015-10-13 → start no earlier than 2015-10-21 |
| 42 | 活动类型 | constraint start no earlier than 2015-10-14 → start no earlier than 2015-10-22 |
| 43 | 用户类型 | constraint start no earlier than 2015-10-14 → start no earlier than 2015-10-22 |
| 44 | >里程碑 3 | constraint start no earlier than 2015-10-15 → start no earlier than 2015-10-23 |
| 45 | **任务活动管理** | constraint start no earlier than 2015-10-16 → start no earlier than 2015-10-23 |
| 46 | 活动模版管理 | constraint start no earlier than 2015-10-16 → start no earlier than 2015-10-23 |
| 47 | 活动触发 | constraint start no earlier than 2015-10-16 → start no earlier than 2015-10-23 |
| 48 | 活动关闭 | constraint start no earlier than 2015-10-19 → start no earlier than 2015-10-26 |
| 49 | 活动依赖 | constraint start no earlier than 2015-10-19 → start no earlier than 2015-10-26 |
| 50 | >里程碑 4 内测版 | was named >里程碑 4 第一版; constraint start no earlier than 2015-10-21 → start no earlier than 2015-10-28 |
| 51 | **工作日历功能** | constraint start no earlier than 2015-10-26 → start no earlier than 2015-10-28 |
| 56 | **系统管理** | constraint start no earlier than 2015-10-26 → start no earlier than 2015-10-30 |

## Version 4 (saved 2015-09-17)

Changed:

| ID | Task | Predecessors |
| --- | --- | --- |
| 3 | json＋springmvc | 2 → none |
| 4 | restful service | 3 → none |
| 7 | spring mvc, mybatis, json，restful，maven，nexus demo | 2 → none |
| 8 | oa bootstrap | 4 → none |

## Version 5 (saved 2015-09-23)

Note of the change: xml mapper style mybatis

Changed:

| ID | Task | Complete |
| --- | --- | --- |
| 8 | oa bootstrap | 0% → 20% |
| 12 | bootstrap UI HTML | 0% → 10% |
| 13 | 数据库ER图 | 50% → 80% |
| 14 | 数据库字段设计 | 40% → 60% |
